# ATC

How a schedule from a web Gantt chart changed from version to version. A marks actual dates.

## Version 1 (saved 2026-05-07)

| ID | WBS | Task | Duration | Start | Finish | Predecessors | Complete |
| --- | --- | --- | --- | --- | --- | --- | --- |
| 2 | 1 | **app** | 42d | 2026-04-09 | 2026-06-05 |  | 2% |
| 3 |  | app工信部备案 | 23d | 2026-04-09 | 2026-05-11 |  |  |
| 4 |  | 新增功能：后台转录和悬浮字幕 | 3d | 2026-04-27 | 2026-04-29 |  | 50% |
| 5 |  | 优化功能：app使用引导 | 2d | 2026-04-29 | 2026-04-30 |  |  |
| 6 |  | 集成面壁的asr和ner模型 | 5d | 2026-05-04 | 2026-05-08 |  |  |
| 7 |  | 跟进国航和厦航对于app的测试，根据反馈优化功能 | 20d | 2026-05-11 | 2026-06-05 |  |  |
| 8 |  | 提交app store审核 | 5d | 2026-05-12 | 2026-05-18 | 3 |  |
| 9 |  | app推广材料准备 | 5d | 2026-05-25 | 2026-05-29 |  |  |
| 10 | 2 | **数据标注和模型迭代** | 60d | 2026-04-27 | 2026-07-17 |  |  |
| 11 |  | 英文数据标注 | 47d | 2026-04-27 | 2026-06-30 |  |  |
| 12 |  | 是否要继续找学生或标注公司做中文标注 | 30d | 2026-05-11 | 2026-06-19 |  |  |
| 13 |  | 收集部分标注数据，迭代模型 | 5d | 2026-06-01 | 2026-06-05 |  |  |
| 14 |  | 收集所有英文标注数据，迭代模型 | 8d | 2026-07-01 | 2026-07-10 | 11 |  |
| 15 |  | 确认是否需要标注更多数据 | 5d | 2026-07-13 | 2026-07-17 | 14 |  |
| 16 | 3 | **飞机连接** | 20d | 2026-05-25 | 2026-06-19 |  |  |
| 17 |  | 跟航司进一步确认ner的优化方向 | 10d | 2026-05-25 | 2026-06-05 |  |  |
| 18 |  | 确认飞机连接进度，以及ner如何跟当前航班真实数据联动 | 10d | 2026-05-25 | 2026-06-05 |  |  |
| 19 |  | 明确耳机线采购问题 | 10d | 2026-06-08 | 2026-06-19 | 18 |  |
| 20 |  | 是否集成efb | 10d | 2026-06-08 | 2026-06-19 |  |  |
| 21 | 4 | **用户测试** | 106d | 2026-05-11 | 2026-10-05 |  |  |
| 22 |  | Alpha版本内部封测 | 15d | 2026-05-11 | 2026-05-29 |  |  |
| 23 |  | 阶段一：地面沙盘与模拟机测试 | 15d | 2026-06-02 | 2026-06-22 |  |  |
| 24 |  | 阶段二：影子模式与跟飞观察 | 20d | 2026-06-23 | 2026-07-20 |  |  |
| 25 |  | 阶段三：非关键航段辅助运行 | 20d | 2026-07-22 | 2026-08-18 |  |  |
| 26 |  | 阶段四：全场景试运行与效能评估 | 30d | 2026-08-20 | 2026-09-30 |  |  |
| 27 | 5 | **正式发布准备** | 79d | 2026-06-02 | 2026-09-18 |  |  |
| 28 |  | 线材与硬件方案确认及采购 | 20d | 2026-06-02 | 2026-06-29 |  |  |
| 29 |  | 合规性认证准备 | 40d | 2026-06-23 | 2026-08-17 |  |  |
| 30 |  | 产品正式发布 | 1d | 2026-10-08 | 2026-10-08 |  |  |

## Version 2 (saved 2026-05-07)

Last finish stays 2026-10-08.

Removed: 19 明确耳机线采购问题
